# Trabajo de Titulo

Schedule from MS Project, 2026-04-15 to 2026-12-19, A marks actual dates.

## Calendars

- Estándar: Mon-Fri 09:00-13:00, 15:00-19:00; Sat-Sun off. Exceptions (off unless hours are given): 2026-05-10 09:00-13:00, 15:00-19:00.

## Schedule

| ID | WBS | Task | Type | Duration | Start | Finish | Complete | Remaining | Actual start |
| --- | --- | --- | --- | --- | --- | --- | --- | --- | --- |
| 1 | 1 | **Tesis** |  | 180d | 2026-04-15 A | 2026-12-19 | 48% | 92.73d |  |
| 2 | 1.1 | **Ante Proyecto** |  | 19d | 2026-04-15 | 2026-05-10 A | 100% |  | 2026-04-16 |
| 3 | 1.1.1 | Buscar Problemática | manual | 3d | 2026-04-16 A | 2026-04-20 A | 100% |  |  |
| 4 | 1.1.2 | Definir idea de Proyecto | manual | 3d | 2026-04-18 A | 2026-04-21 A | 100% |  |  |
| 5 | 1.1.3 | Definir objetivos | manual | 3d | 2026-04-20 A | 2026-04-22 A | 100% |  |  |
| 6 | 1.1.4 | Definir metodología | manual | 3d | 2026-04-22 A | 2026-04-24 A | 100% |  |  |
| 7 | 1.1.5 | Definir alcance y limitaciones | manual | 2d | 2026-04-25 A | 2026-04-26 A | 100% |  |  |
| 8 | 1.1.6 | Definición del caso de estudio | manual | 2d | 2026-04-26 A | 2026-04-27 A | 100% |  |  |
| 9 | 1.1.7 | Definir plan de trabajo | manual | 1d | 2026-04-27 A | 2026-04-27 A | 100% |  |  |
| 10 | 1.1.8 | Elaborar propuesta cronograma | manual | 2d | 2026-04-27 A | 2026-04-28 A | 100% |  |  |
| 11 | 1.1.9 | Elaborar informe de propuesta | manual | 9d | 2026-04-29 A | 2026-05-09 A | 100% |  |  |
| 12 | 1.1.10 | Entregar informe de propuesta | manual | 1d | 2026-05-10 A | 2026-05-10 A | 100% |  |  |
| 13 | 1.2 | **Investigación y correcciones** |  | 52d | 2026-05-10 | 2026-07-20 A | 100% |  | 2026-05-11 |
| 14 | 1.2.1 | Correcciones del Informe anteproyecto | manual | 5d | 2026-05-11 A | 2026-05-15 A | 100% |  |  |
| 15 | 1.2.2 | Definir backlog (Scrum) | manual | 5d | 2026-05-11 A | 2026-05-15 A | 100% |  |  |
| 16 | 1.2.3 | Investigación de tecnologias detectoras de pantentes | manual | 14d | 2026-05-13 A | 2026-05-30 A | 100% |  |  |
| 17 | 1.2.4 | Retroalimentación profesor guia | manual | 1d | 2026-05-29 A | 2026-05-29 A | 100% |  |  |
| 18 | 1.2.5 | Comparacion de Versiones de YOLO | manual | 5d | 2026-05-26 A | 2026-05-31 A | 100% |  |  |
| 19 | 1.2.6 | Investigación YOLOv8 aplicada a patentes | manual | 3d | 2026-06-01 A | 2026-06-03 A | 100% |  |  |
| 20 | 1.2.7 | Justificación teórica de la elección de YOLOv12 para entornos con recursos limitados. | manual | 5d | 2026-06-02 A | 2026-06-06 A | 100% |  |  |
| 21 | 1.2.8 | Busqueda de Dataset de patentes chilenas | manual | 2d | 2026-06-04 A | 2026-06-05 A | 100% |  |  |
| 22 | 1.2.9 | Mejoramiento del estado del arte | manual | 11d | 2026-06-01 A | 2026-06-14 A | 100% |  |  |
| 23 | 1.2.10 | Visita a terreno del estacionamiento | manual | 1d | 2026-06-04 A | 2026-06-04 A | 100% |  |  |
| 24 | 1.2.11 | Cálculo del flujo vehicular | manual | 1d | 2026-06-04 A | 2026-06-04 A | 100% |  |  |
| 25 | 1.2.12 | Analisis del lugar y mejor distribución de los vehiculos | manual | 1d | 2026-06-05 A | 2026-06-05 A | 100% |  |  |
| 26 | 1.2.13 | Preparación de formato de informe | manual | 36d | 2026-06-01 A | 2026-07-20 A | 100% |  |  |

| ID | WBS | Task | Type | Duration | Start | Finish | Complete |
| --- | --- | --- | --- | --- | --- | --- | --- |
| 27 | 1.3 | **Situación actual** |  | 25d | 2026-06-22 A | 2026-07-24 A | 100% |
| 28 | 1.3.1 | Creación de repositorio GitHub para archivos de Trabajo de titulo | manual | 1d | 2026-06-22 A | 2026-06-22 A | 100% |
| 29 | 1.3.2 | Definir que tecnologias usar | manual | 16d | 2026-06-22 A | 2026-07-12 A | 100% |
| 30 | 1.3.3 | Análisis teórico del presupuesto de tiempo de ejecución | manual | 3d | 2026-06-22 A | 2026-06-24 A | 100% |
| 31 | 1.3.4 | Justificación técnica de la tolerancia a fallos | manual | 3d | 2026-06-24 A | 2026-06-26 A | 100% |
| 32 | 1.3.5 | Investigación del patrón de caracteres | manual | 2d | 2026-06-25 A | 2026-06-26 A | 100% |
| 33 | 1.3.6 | Creación del diagrama de arquitectura física/lógica | manual | 6d | 2026-06-29 A | 2026-07-05 A | 100% |
| 34 | 1.3.7 | Diseño del modelo de contingencia Offline-First | manual | 8d | 2026-07-01 A | 2026-07-10 A | 100% |
| 35 | 1.3.8 | Creación del diagrama Entidad-Relación conceptual para el almacenamiento centralizado y la réplica local reducida. | manual | 3d | 2026-07-02 A | 2026-07-05 A | 100% |
| 36 | 1.3.9 | Redacción y priorización del Backlog de Producto (Scrum) que se ejecutará el próximo semestre. | manual | 3d | 2026-07-06 A | 2026-07-08 A | 100% |
| 37 | 1.3.10 | Definición de los criterios de aceptación de imágenes | manual | 6d | 2026-07-03 A | 2026-07-10 A | 100% |
| 38 | 1.3.11 | Correción de citaciones APA 7ma Edición | manual | 7d | 2026-07-11 A | 2026-07-20 A | 100% |
| 39 | 1.3.12 | Preparacion Informe Final Titulo 1 | manual | 15d | 2026-07-06 A | 2026-07-24 A | 100% |
| 40 | 1.4 | Entrega Informe Trabajo de Titulo 1 | milestone, manual | 0d | 2026-07-24 | 2026-07-24 |  |
| 41 | 1.5 | **Configuración de Entornos y Adquisición de Datos** |  | 18d | 2026-08-10 | 2026-09-02 |  |
| 42 | 1.5.1 | Balanceo de clases para patentes chilenas escasas. | manual | 3d | 2026-08-10 | 2026-08-12 |  |
| 43 | 1.5.2 | Evaluación de herramientas de anotación para YOLOv12. | manual | 2d | 2026-08-10 | 2026-08-11 |  |
| 44 | 1.5.3 | Configuración del entorno local con Docker, PostgreSQL y Node. | manual | 6d | 2026-08-12 | 2026-08-19 |  |
| 45 | 1.5.4 | Captura fotográfica en terreno y web para el dataset base. | manual | 13d | 2026-08-17 | 2026-09-02 |  |
| 46 | 1.5.5 | Etiquetado manual de bounding boxes en formato de texto. | manual | 3d | 2026-08-24 | 2026-08-26 |  |
| 47 | 1.5.6 | Script para la partición del dataset en entrenamiento y test. | manual | 5d | 2026-08-24 | 2026-08-28 |  |
| 48 | 1.5.7 | Implementación de pipeline OpenCV con CLAHE y redimensión. | manual | 3d | 2026-08-31 | 2026-09-02 |  |
| 49 | 1.6 | **Core de IA y Base de Datos Local** |  | 16d | 2026-09-03 | 2026-09-24 |  |
| 50 | 1.6.1 | Investigación del impacto de tasa de aprendizaje y tamaño de batch en YOLOv12s. | manual | 2d | 2026-09-03 | 2026-09-04 |  |
| 51 | 1.6.2 | Análisis de binarización de Otsu versus binarización adaptativa para OCR. | manual | 2d | 2026-09-07 | 2026-09-08 |  |

| ID | WBS | Task | Type | Duration | Start | Finish | Total slack |
| --- | --- | --- | --- | --- | --- | --- | --- |
| 52 | 1.6.3 | **Base de Datos Maestra (Nodo Central PostgreSQL)** |  | 6d | 2026-09-07 | 2026-09-14 | 0d |
| 53 | 1.6.3.1 | Gestión de Entidades y Registro de Usuarios/Vehículos | manual | 5d | 2026-09-07 | 2026-09-11 |  |
| 54 | 1.6.3.2 | Almacenamiento Centralizado de Trazabilidad e Históricos | manual | 4d | 2026-09-09 | 2026-09-14 |  |
| 55 | 1.6.4 | **Base de Datos Local de Inferencia (Nodo de Borde SQLite)** |  | 8d | 2026-09-07 | 2026-09-16 |  |
| 56 | 1.6.4.1 | Caché Local de Listas Blancas (Consulta de Alta Velocidad) | manual | 5d | 2026-09-07 | 2026-09-11 |  |
| 57 | 1.6.4.2 | Cola de Persistencia Temporal y Encolado para Sincronización Asíncrona | manual | 6d | 2026-09-07 | 2026-09-13 |  |
| 58 | 1.6.5 | Configuración del script de entrenamiento de YOLOv12s en GPU. | manual | 4d | 2026-09-14 | 2026-09-17 |  |
| 59 | 1.6.6 | Ejecución del entrenamiento del modelo base versión uno punto cero. | manual | 2d | 2026-09-21 | 2026-09-22 |  |
| 60 | 1.6.7 | Módulo de inferencia en Python para placas estáticas. | manual | 3d | 2026-09-21 | 2026-09-23 |  |
| 61 | 1.6.8 | Inicialización del esquema de base de datos SQLite en el borde. | manual | 4d | 2026-09-21 | 2026-09-24 |  |
| 62 | 1.6.9 | Script controlador en Python para la base de datos SQLite. | manual | 4d | 2026-09-21 | 2026-09-24 |  |
| 63 | 1.6.10 | Integración inicial de YOLOv12s con EasyOCR. | manual | 2d | 2026-09-23 | 2026-09-24 |  |
| 64 | 1.7 | **Backend Centralizado y API REST** |  | 15d | 2026-09-25 | 2026-10-15 |  |
| 65 | 1.7.1 | Investigación de Seguridad en API REST y estrategia JWT para Edge-Cloud. | manual | 2d | 2026-09-25 | 2026-09-26 |  |
| 66 | 1.7.2 | Concurrencia con FastAPI Async y Await para logs. | manual | 2d | 2026-09-28 | 2026-09-29 |  |
| 67 | 1.7.3 | Creación del proyecto FastAPI con SQLAlchemy y Pydantic. | manual | 11d | 2026-09-28 | 2026-10-11 |  |
| 68 | 1.7.4 | Migración del modelo relacional a la base de datos PostgreSQL. | manual | 4d | 2026-09-29 | 2026-10-02 |  |
| 69 | 1.7.5 | Endpoints de la API para autenticación y roles de usuario. | manual | 3d | 2026-10-01 | 2026-10-04 |  |
| 70 | 1.7.6 | Endpoints de la API para el CRUD de vehículos autorizados. | manual | 3d | 2026-10-05 | 2026-10-07 |  |
| 71 | 1.7.7 | Endpoints de la API para la recepción de logs de inferencia. | manual | 4d | 2026-10-05 | 2026-10-08 |  |
| 72 | 1.7.8 | Despliegue del backend en la nube mediante Render o AWS. | manual | 5d | 2026-10-11 | 2026-10-15 |  |
| 73 | 1.8 | **Frontend (Panel Web) y Sincronización** |  | 15d | 2026-10-16 | 2026-11-05 |  |
| 74 | 1.8.1 | Investigación de Algoritmos de Exponential Backoff para la reconexión. | manual | 1d | 2026-10-16 | 2026-10-16 |  |
| 75 | 1.8.2 | Análisis de Virtualización de listas en React para alta carga de datos. | manual | 5d | 2026-10-17 | 2026-10-22 |  |
| 76 | 1.8.3 | Inicialización del proyecto React con Tailwind y rutas. | manual | 6d | 2026-10-20 | 2026-10-27 |  |
| 77 | 1.8.4 | Vista de login y dashboard estadístico centralizado. | manual | 3d | 2026-10-22 | 2026-10-26 |  |
| 78 | 1.8.5 | Módulo en React para la gestión de vehículos matriculados. | manual | 6d | 2026-10-26 | 2026-10-31 |  |
| 79 | 1.8.6 | Tabla en React para el historial de accesos en tiempo real. | manual | 2d | 2026-10-30 | 2026-10-31 |  |
| 80 | 1.8.7 | Worker en Python para la sincronización asíncrona local y nube. | manual | 3d | 2026-11-02 | 2026-11-04 |  |
| 81 | 1.8.8 | Script para la descarga periódica de la lista blanca. | manual | 4d | 2026-11-02 | 2026-11-05 |  |

| ID | WBS | Task | Type | Duration | Start | Finish | Deadline |
| --- | --- | --- | --- | --- | --- | --- | --- |
| 82 | 1.9 | **Integración y UI Local** |  | 12d | 2026-11-06 | 2026-11-23 |  |
| 83 | 1.9.1 | Investigación y conversión del modelo YOLOv12s a formatos ONNX y TensorRT. | manual | 2d | 2026-11-06 | 2026-11-07 |  |
| 84 | 1.9.2 | Análisis de métricas de usabilidad de interfaz en seguridad crítica. | manual | 1d | 2026-11-09 | 2026-11-09 |  |
| 85 | 1.9.3 | Desarrollo de interfaz de usuario local en React para el operador del portón. | manual | 3d | 2026-11-10 | 2026-11-12 |  |
| 86 | 1.9.4 | Desarrollo y conexión de interfaz local con streaming de video en OpenCV. | manual | 8d | 2026-11-12 | 2026-11-22 |  |
| 87 | 1.9.5 | Desarrollo de lógica de negocio para validación en SQLite y apertura. | manual | 4d | 2026-11-16 | 2026-11-19 |  |
| 88 | 1.9.6 | Desarrollo e integración total de interfaz local, IA, SQLite, API y Web. | manual | 5d | 2026-11-17 | 2026-11-21 |  |
| 89 | 1.10 | **Pruebas** |  | 6d | 2026-11-23 | 2026-11-30 |  |
| 90 | 1.10.1 | Análisis estadístico de errores en caracteres del OCR. | manual | 1d | 2026-11-23 | 2026-11-23 |  |
| 91 | 1.10.2 | Desarrollo y pruebas de carga concurrente en la API centralizada. | manual | 6d | 2026-11-23 | 2026-11-29 |  |
| 92 | 1.10.3 | Desarrollo y pruebas de estrés con simulación de corte de internet offline. | manual | 6d | 2026-11-23 | 2026-11-29 |  |
| 93 | 1.10.4 | Análisis y medición de la latencia total del pipeline en milisegundos. | manual | 2d | 2026-11-26 | 2026-11-27 |  |
| 94 | 1.10.5 | Análisis y cálculo de matriz de confusión, precisión, recall y F1-Score. | manual | 1d | 2026-11-28 | 2026-11-28 |  |
| 95 | 1.10.6 | Desarrollo, depuración y corrección de bugs críticos del sistema. | manual | 6d | 2026-11-23 | 2026-11-30 |  |
| 96 | 1.11 | **Documentación Final** |  | 15d | 2026-11-30 | 2026-12-18 |  |
| 97 | 1.11.1 | Documentación y finalización del capítulo de resultados y discusión. | manual | 3d | 2026-11-30 | 2026-12-02 |  |
| 98 | 1.11.2 | Documentación y redacción de conclusiones y trabajos futuros de la tesis. | manual | 4d | 2026-12-01 | 2026-12-04 |  |
| 99 | 1.11.3 | Documentación de manual técnico de despliegue en la sección de anexos. | manual | 6d | 2026-12-07 | 2026-12-13 |  |
| 100 | 1.11.4 | Revisión de formato según normas APA/IEEE y ortografía. | manual | 3d | 2026-12-10 | 2026-12-13 |  |
| 101 | 1.12 | Entrega del prototipo funcional y del documento final de tesis. | manual | 1d | 2026-12-18 | 2026-12-18 | 2026-12-18 |
